# Cronograma

Schedule from MS Project, 2009-11-02 to 2009-12-11.
sagitario

## Calendars

- Estándar: Mon-Fri 08:00-12:00, 13:00-17:00; Sat-Sun off.

## Schedule

| ID | WBS | Task | Duration | Start | Finish | Predecessors | Baseline start | Baseline finish | Baseline duration | Total slack | Constraint |
| --- | --- | --- | --- | --- | --- | --- | --- | --- | --- | --- | --- |
| 1 | 1 | **S.U.M.T. EN 13.2 Kv** | 30d | 2009-11-02 | 2009-12-11 |  |  |  |  | 0d |  |
| 2 | 1.1 | **REDES PRIMARIAS EN 13.2 KV** | 30d | 2009-11-02 | 2009-12-11 |  | 2003-01-03 | 2003-01-03 | 1d | 0d |  |
| 3 | 1.1.1 | **SUMINISTRO Y TRANSPORTE DE MATERIALES A OBRA** | 6d | 2009-11-02 | 2009-11-09 |  | 2003-01-03 | 2003-01-03 | 1d | 24d |  |
| 4 | 1.1.1.1 | Postes | 6d | 2009-11-02 | 2009-11-09 |  | 2003-01-03 | 2003-01-03 | 1d | 24d | start no earlier than 2009-11-02 |
| 5 | 1.1.1.2 | Conductores y accesorios electricos | 6d | 2009-11-02 | 2009-11-09 |  |  |  |  | 24d | start no earlier than 2009-11-02 |
| 6 | 1.1.1.3 | Aisladores y accesorios electricos | 6d | 2009-11-02 | 2009-11-09 |  |  |  |  | 24d | start no earlier than 2009-11-02 |
| 7 | 1.1.1.4 | Equipo de transformacion maniobra y control | 6d | 2009-11-02 | 2009-11-09 |  |  |  |  | 24d | start no earlier than 2009-11-02 |
| 8 | 1.1.1.5 | Puesta a tierra y retenidas | 6d | 2009-11-02 | 2009-11-09 |  |  |  |  | 15d | start no earlier than 2009-11-02 |
| 9 | 1.1.1.6 | Insumos | 6d | 2009-11-02 | 2009-11-09 |  |  |  |  | 15d | start no earlier than 2009-11-02 |
| 10 | 1.1.2 | **MONTAJE ELECTROMECANICO** | 24d | 2009-11-10 | 2009-12-11 |  |  |  |  | 0d |  |
| 11 | 1.1.2.1 | Replanteo | 1d | 2009-11-10 | 2009-11-10 |  |  |  |  | 0d | start no earlier than 2009-11-10 |
| 12 | 1.1.2.2 | Apertura de Hoyos e Izaje de Postes | 3d | 2009-11-11 | 2009-11-13 | 11 |  |  |  | 0d | start no earlier than 2009-04-30 |
| 13 | 1.1.2.3 | Apertura de hoyos y montaje de retenidas | 1d | 2009-11-16 | 2009-11-16 | 12 |  |  |  | 0d |  |
| 14 | 1.1.2.4 | Tendido de conductores y flechado | 2d | 2009-11-17 | 2009-11-18 | 13 |  |  |  | 0d |  |
| 15 | 1.1.2.5 | Armado de derivacion y anclaje | 1d | 2009-11-19 | 2009-11-19 | 14 |  |  |  | 0d |  |
| 16 | 1.1.2.6 | Armado de Angulo de 60-90 | 2d | 2009-11-20 | 2009-11-23 | 15 |  |  |  | 0d | start no earlier than 2009-05-11 |
| 17 | 1.1.2.7 | Armado de seccionamiento | 1d | 2009-11-24 | 2009-11-24 | 16 |  |  |  | 0d | start no earlier than 2009-05-12 |
| 18 | 1.1.2.8 | Montaje de subestacion y trafomix | 2d | 2009-11-25 | 2009-11-26 | 17 |  |  |  | 0d | start no earlier than 2009-05-12 |
| 19 | 1.1.2.9 | Sistema de puesta a tierra | 2d | 2009-11-27 | 2009-11-30 | 18 |  |  |  | 0d | start no earlier than 2009-05-12 |
| 20 | 1.1.2.10 | Revision, pruebas electricas y puesta en servicio | 9d | 2009-12-01 | 2009-12-11 | 19 |  |  |  | 0d | start no earlier than 2009-05-12 |
